# Software Development

How a schedule from MS Project changed from version to version. A marks actual dates.

## Version 1 (saved 2025-06-07)

Note of the change: Submit HW1

| ID | WBS | Task | Duration | Start | Finish | Predecessors | Total float | Constraint |
| --- | --- | --- | --- | --- | --- | --- | --- | --- |
| 1 | 1 | **Project plan** | 17d | 2025-06-03 | 2025-06-25 |  |  |  |
| 2 |  | Write plan | 37.4h | 2025-06-03 | 2025-06-09 |  | 0.5d | start no earlier than 2025-06-03 |
| 3 | 1.2 | **Review plan** | 11d | 2025-06-09 | 2025-06-24 |  |  |  |
| 4 |  | Preparation for review | 46.75h | 2025-06-09 | 2025-06-17 | 2 | 0.5d |  |
| 5 |  | Review meeting | 37.4h | 2025-06-17 | 2025-06-24 | 4 | 0.5d |  |
| 6 |  | Rework | 14.2h | 2025-06-24 | 2025-06-25 | 5 | 0.5d |  |
| 7 | 2 | **Requirements** | 15d | 2025-06-25 | 2025-07-16 |  |  |  |
| 8 |  | Write requirements | 31.2h | 2025-06-25 | 2025-07-01 | 6 | 0.5d |  |
| 9 |  | Write use case model | 15.2h | 2025-06-25 | 2025-06-27 | 6 | 2.61d |  |
| 10 | 2.3 | **Review requirements** | 11d | 2025-06-27 | 2025-07-11 |  |  |  |
| 11 |  | Preparation for review | 38.5h | 2025-07-01 | 2025-07-08 | 8, 9 | 0.5d | start no earlier than 2025-06-27 |
| 12 |  | Review meeting | 26.08h | 2025-07-08 | 2025-07-11 | 11 | 0.5d |  |
| 13 |  | Rework | 19.4h | 2025-07-11 | 2025-07-16 | 12 | 0.5d |  |
| 14 | 3 | **Analysis** | 6d | 2025-07-16 | 2025-07-23 |  |  |  |
| 15 |  | Write analysis document | 9.6h | 2025-07-16 | 2025-07-17 | 13 | 0.5d |  |
| 16 | 3.2 | **Review analysis document** | 3d | 2025-07-17 | 2025-07-21 |  |  |  |
| 17 |  | Preparation for analysis document | 9.6h | 2025-07-17 | 2025-07-18 | 15 | 0.5d |  |
| 18 |  | Review meeting | 6h | 2025-07-18 | 2025-07-21 | 17 | 0.5d |  |
| 19 |  | Rework | 16.5h | 2025-07-21 | 2025-07-23 | 18 | 0.5d |  |
| 20 | 4 | **Design** | 17d | 2025-07-23 | 2025-08-14 |  |  |  |
| 21 |  | Write DD | 26.8h | 2025-07-23 | 2025-07-28 | 19 | 340.5d |  |
| 22 | 4.2 | **Review DD** | 10d | 2025-07-28 | 2025-08-08 |  |  |  |
| 23 |  | Preparation for DD | 44.67h | 2025-07-28 | 2025-08-05 | 21 | 340.5d |  |
| 24 |  | Review meeting | 22.33h | 2025-08-05 | 2025-08-08 | 23 | 340.5d |  |
| 25 |  | Rework | 17.6h | 2025-08-08 | 2025-08-12 | 24 | 340.5d |  |
| 26 |  | Write DM | 69h | 2025-07-23 | 2025-08-05 | 19 | 0.5d |  |
| 27 | 4.5 | **Review DM** | 5d | 2025-08-05 | 2025-08-11 |  |  |  |
| 28 |  | Preparation for DM | 23h | 2025-08-05 | 2025-08-08 | 26 | 0.5d |  |
| 29 |  | Review meeting | 13.8h | 2025-08-08 | 2025-08-11 | 28 | 0.5d |  |
| 30 |  | Rework | 18.8h | 2025-08-11 | 2025-08-14 | 29 | 0.5d |  |
| 31 | 5 | **Coding and unit test** | 125d | 2025-08-14 | 2026-02-04 |  |  |  |
| 32 |  | Write code | 345h | 2025-08-14 | 2025-10-14 | 30 | 0.5d |  |
| 33 | 5.2 | **Unit testing** | 82d | 2025-10-14 | 2026-02-04 |  |  |  |
| 34 |  | Prepare/execute test cases | 34.8d | 2025-10-14 | 2025-12-02 | 32 | 0.5d |  |
| 35 |  | Fix found defects | 26d | 2025-12-02 | 2026-01-07 | 34 | 0.5d |  |
| 36 |  | Test fixed defects | 20.8d | 2026-01-07 | 2026-02-04 | 35 | 0.5d |  |
| 37 | 5.3 | **Code inspection** | 15d | 2025-10-14 | 2025-11-03 |  |  |  |
| 38 |  | Preparation for code inspection | 31.36h | 2025-10-14 | 2025-10-20 | 32 | 67.76d |  |
| 39 |  | Code inspection meeting | 21.56h | 2025-10-20 | 2025-10-22 | 38 | 67.76d |  |
| 40 |  | Rework | 61.8h | 2025-10-22 | 2025-11-03 | 39 | 67.76d |  |
| 41 | 6 | **System integration testing** | 73d | 2026-02-04 | 2026-05-15 |  |  |  |
| 42 |  | Write test plan | 29.8d | 2026-02-04 | 2026-03-18 | 36, 40 | 0.5d |  |
| 43 | 6.2 | **Review TP** | 11d | 2026-03-18 | 2026-04-01 |  |  |  |
| 44 |  | Preparation for TP | 29.8h | 2026-03-18 | 2026-03-24 | 42 | 0.5d |  |
| 45 |  | Review TP meeting | 24.83h | 2026-03-24 | 2026-03-27 | 44 | 0.5d |  |
| 46 |  | Rework | 24.75h | 2026-03-27 | 2026-04-01 | 45 | 0.5d |  |
| 47 |  | Execute TP | 4.6d | 2026-04-01 | 2026-04-08 | 46 | 0.5d |  |
| 48 |  | Fix found defects | 19.25d | 2026-04-08 | 2026-05-05 | 47 | 0.5d |  |
| 49 |  | Test fixed defects | 7.7d | 2026-05-05 | 2026-05-15 | 48 | 0.5d |  |
| 50 | 7 | **Load, stress and performance testing** | 110d | 2026-05-15 | 2026-10-15 |  |  |  |
| 51 |  | Write test plan | 50.25d | 2026-05-15 | 2026-07-24 | 49 | 0.5d |  |
| 52 | 7.2 | **Review TP** | 17d | 2026-07-24 | 2026-08-17 |  |  |  |
| 53 |  | Preparation for TP | 67h | 2026-07-24 | 2026-08-05 | 51 | 0.5d |  |
| 54 |  | Review TP meeting | 33.5h | 2026-08-05 | 2026-08-11 | 53 | 0.5d |  |
| 55 |  | Rework | 29.33h | 2026-08-11 | 2026-08-17 | 54 | 0.5d |  |
| 56 |  | Execute TP | 19.2d | 2026-08-17 | 2026-09-11 | 55 | 0.5d |  |
| 57 |  | Fix found defects | 14.8d | 2026-09-11 | 2026-10-02 | 56 | 0.5d |  |
| 58 |  | Test fixed defects | 9.25d | 2026-10-02 | 2026-10-15 | 57 | 0.5d |  |
| 59 | 8 | **Documentation** | 14d | 2026-10-15 | 2026-11-03 |  |  |  |
| 60 |  | User documentation | 28.2h | 2026-10-15 | 2026-10-21 | 58 | 0.5d |  |
| 61 | 8.2 | **Review UD** | 10d | 2026-10-21 | 2026-11-03 |  |  |  |
| 62 |  | Preparation for UD review | 35.25h | 2026-10-21 | 2026-10-27 | 60 | 0.5d |  |
| 63 |  | Review UD meeting | 14.1h | 2026-10-27 | 2026-10-29 | 62 | 0.5d |  |
| 64 |  | Rework | 20.3h | 2026-10-29 | 2026-11-03 | 63 | 0.5d |  |
| 65 | 9 | **Training material** | 21d | 2026-11-03 | 2026-12-01 |  |  |  |
| 66 |  | Tutorial | 66.5h | 2026-11-03 | 2026-11-13 | 64 | 0.5d |  |
| 67 | 9.2 | **Review tutorial** | 13d | 2026-11-13 | 2026-12-01 |  |  |  |
| 68 |  | Preparation for tutorial review | 53.2h | 2026-11-13 | 2026-11-24 | 66 | 0.5d |  |
| 69 |  | Review tutorial meeting | 26.6h | 2026-11-24 | 2026-11-27 | 68 | 0.5d |  |
| 70 |  | Rework | 16.8h | 2026-11-27 | 2026-12-01 | 69 | 0.5d |  |

## Version 2 (saved 2025-06-08)

Note of the change: Add gitignore, submit mid exam

Last finish 2026-12-01 → 2026-02-03 (-301d).

Changed:

| ID | Task | Start | Finish | Duration | Total float | Other |
| --- | --- | --- | --- | --- | --- | --- |
| 1 | **Project plan** |  | 2025-06-25 → 2025-06-13 (-12d) | 17d → 9d |  |  |
| 3 | **Review plan** |  | 2025-06-24 → 2025-06-11 (-13d) | 11d → 2d |  |  |
| 4 | Preparation for review |  | 2025-06-17 → 2025-06-10 (-7d) | 46.75h → 6.64h | 0.5d → 0.07d |  |
| 5 | Review meeting | 2025-06-17 → 2025-06-10 (-7d) | 2025-06-24 → 2025-06-11 (-13d) | 37.4h → 6.23h | 0.5d → 0.07d |  |
| 6 | Rework | 2025-06-24 → 2025-06-11 (-13d) | 2025-06-25 → 2025-06-13 (-12d) |  | 0.5d → 0.07d |  |
| 7 | **Requirements** | 2025-06-25 → 2025-06-13 (-12d) | 2025-07-16 → 2025-06-19 (-27d) | 15d → 5d |  |  |
| 8 | Write requirements | 2025-06-25 → 2025-06-13 (-12d) | 2025-07-01 → 2025-06-17 (-14d) | 31.2h → 15.6h | 0.5d → 0.07d |  |
| 9 | Write use case model | 2025-06-25 → 2025-06-13 (-12d) | 2025-06-27 → 2025-06-16 (-11d) | 15.2h → 7.6h | 2.61d → 1.07d |  |
| 10 | **Review requirements** | 2025-06-27 → 2025-06-17 (-10d) | 2025-07-11 → 2025-06-18 (-23d) | 11d → 2d |  |  |
| 11 | Preparation for review | 2025-07-01 → 2025-06-17 (-14d) | 2025-07-08 → 2025-06-18 (-20d) | 38.5h → 9.62h | 0.5d → 0.07d | constraint start no earlier than 2025-06-27 → start no earlier than 2025-06-17 |
| 12 | Review meeting | 2025-07-08 → 2025-06-18 (-20d) | 2025-07-11 → 2025-06-18 (-23d) | 26.08h → 5.21h | 0.5d → 0.07d |  |
| 13 | Rework | 2025-07-11 → 2025-06-18 (-23d) | 2025-07-16 → 2025-06-19 (-27d) | 19.4h → 6.46h | 0.5d → 0.07d |  |
| 14 | **Analysis** | 2025-07-16 → 2025-06-19 (-27d) | 2025-07-23 → 2025-06-23 (-30d) | 6d → 3d |  |  |
| 15 | Write analysis document | 2025-07-16 → 2025-06-19 (-27d) | 2025-07-17 → 2025-06-20 (-27d) | 9.6h → 4.8h | 0.5d → 0.07d |  |
| 16 | **Review analysis document** | 2025-07-17 → 2025-06-20 (-27d) | 2025-07-21 → 2025-06-20 (-31d) | 3d → 1d |  |  |
| 17 | Preparation for analysis document | 2025-07-17 → 2025-06-20 (-27d) | 2025-07-18 → 2025-06-20 (-28d) | 9.6h → 2.4h | 0.5d → 0.07d |  |
| 18 | Review meeting | 2025-07-18 → 2025-06-20 (-28d) | 2025-07-21 → 2025-06-20 (-31d) | 6h → 1.2h | 0.5d → 0.07d |  |
| 19 | Rework | 2025-07-21 → 2025-06-20 (-31d) | 2025-07-23 → 2025-06-23 (-30d) | 16.5h → 8.25h | 0.5d → 0.07d |  |
| 20 | **Design** | 2025-07-23 → 2025-06-23 (-30d) | 2025-08-14 → 2025-07-10 (-35d) | 17d → 14d |  |  |
| 21 | Write DD | 2025-07-23 → 2025-06-23 (-30d) | 2025-07-28 → 2025-06-27 (-31d) |  | 340.5d → 153.14d | resources System Engineer 7; System Engineer 8 → System Engineer 7 |
| 22 | **Review DD** | 2025-07-28 → 2025-06-27 (-31d) | 2025-08-08 → 2025-07-01 (-38d) | 10d → 3d |  |  |
| 23 | Preparation for DD | 2025-07-28 → 2025-06-27 (-31d) | 2025-08-05 → 2025-06-30 (-36d) | 44.67h → 14.89h | 340.5d → 153.14d | resources System Engineer 9; System Engineer 204; System Engineer 205; System Engineer 501 → System Engineer 1; System Engineer 2; System Engineer 8 |
| 24 | Review meeting | 2025-08-05 → 2025-06-30 (-36d) | 2025-08-08 → 2025-07-01 (-38d) | 22.33h → 5.58h | 340.5d → 153.14d | resources System Engineer 1; System Engineer 2; System Engineer 7; System Engineer 8; System Engineer 9 → System Engineer 1; System Engineer 2; System Engineer 7; System Engineer 8 |
| 25 | Rework | 2025-08-08 → 2025-07-01 (-38d) | 2025-08-12 → 2025-07-03 (-40d) |  | 340.5d → 153.14d | resources System Engineer 7; System Engineer 8 → System Engineer 7 |
| 26 | Write DM | 2025-07-23 → 2025-06-23 (-30d) | 2025-08-05 → 2025-07-04 (-32d) |  | 0.5d → 0.07d | resources System Engineer 204; System Engineer 205 → System Engineer 9 |
| 27 | **Review DM** | 2025-08-05 → 2025-07-04 (-32d) | 2025-08-11 → 2025-07-07 (-35d) | 5d → 2d |  |  |
| 28 | Preparation for DM | 2025-08-05 → 2025-07-04 (-32d) | 2025-08-08 → 2025-07-07 (-32d) | 23h → 7.66h | 0.5d → 0.07d | resources System Engineer 1; System Engineer 2; System Engineer 9; System Engineer 7 → System Engineer 204; System Engineer 205; System Engineer 501 |
| 29 | Review meeting | 2025-08-08 → 2025-07-07 (-32d) | 2025-08-11 → 2025-07-07 (-35d) | 13.8h → 3.45h | 0.5d → 0.07d | resources System Engineer 204; System Engineer 205; System Engineer 8; System Engineer 9; System Engineer 501 → System Engineer 204; System Engineer 205; System Engineer 9; System Engineer 501 |
| 30 | Rework | 2025-08-11 → 2025-07-07 (-35d) | 2025-08-14 → 2025-07-10 (-35d) |  | 0.5d → 0.07d | resources System Engineer 204; System Engineer 205 → System Engineer 9 |
| 31 | **Coding and unit test** | 2025-08-14 → 2025-07-10 (-35d) | 2026-02-04 → 2025-09-19 (-138d) | 125d → 52d |  |  |
| 32 | Write code | 2025-08-14 → 2025-07-10 (-35d) | 2025-10-14 → 2025-07-24 (-82d) | 345h → 86.25h | 0.5d → 0.07d |  |
| 33 | **Unit testing** | 2025-10-14 → 2025-07-24 (-82d) | 2026-02-04 → 2025-09-19 (-138d) | 82d → 42d |  |  |
| 34 | Prepare/execute test cases | 2025-10-14 → 2025-07-24 (-82d) | 2025-12-02 → 2025-08-19 (-105d) | 34.8d → 17.4d | 0.5d → 0.07d |  |
| 35 | Fix found defects | 2025-12-02 → 2025-08-19 (-105d) | 2026-01-07 → 2025-09-05 (-124d) | 26d → 13d | 0.5d → 0.07d |  |
| 36 | Test fixed defects | 2026-01-07 → 2025-09-05 (-124d) | 2026-02-04 → 2025-09-19 (-138d) | 20.8d → 10.4d | 0.5d → 0.07d |  |
| 37 | **Code inspection** | 2025-10-14 → 2025-07-24 (-82d) | 2025-11-03 → 2025-08-01 (-94d) | 15d → 7d |  |  |
| 38 | Preparation for code inspection | 2025-10-14 → 2025-07-24 (-82d) | 2025-10-20 → 2025-07-25 (-87d) | 31.36h → 7.84h | 67.76d → 35.49d | resources Programmer 203; Programmer 205; Programmer 8; Programmer 7 → Programmer 203; Programmer 205; Programmer 8; Programmer 9 |
| 39 | Code inspection meeting | 2025-10-20 → 2025-07-25 (-87d) | 2025-10-22 → 2025-07-28 (-86d) | 21.56h → 4.31h | 67.76d → 35.49d |  |
| 40 | Rework | 2025-10-22 → 2025-07-28 (-86d) | 2025-11-03 → 2025-08-01 (-94d) | 61.8h → 30.9h | 67.76d → 35.49d |  |
| 41 | **System integration testing** | 2026-02-04 → 2025-08-01 (-187d) | 2026-05-15 → 2025-11-06 (-190d) | 73d → 70d |  |  |
| 42 | Write test plan | 2026-02-04 → 2025-09-19 (-138d) | 2026-03-18 → 2025-10-10 (-159d) | 29.8d → 14.9d | 0.5d → 0.07d |  |
| 43 | **Review TP** | 2026-03-18 → 2025-10-10 (-159d) | 2026-04-01 → 2025-10-15 (-168d) | 11d → 4d |  |  |
| 44 | Preparation for TP | 2026-03-18 → 2025-10-10 (-159d) | 2026-03-24 → 2025-10-13 (-162d) | 29.8h → 7.45h | 0.5d → 0.07d |  |
| 45 | Review TP meeting | 2026-03-24 → 2025-10-13 (-162d) | 2026-03-27 → 2025-10-14 (-164d) | 24.83h → 4.97h | 0.5d → 0.07d |  |
| 46 | Rework | 2026-03-27 → 2025-10-14 (-164d) | 2026-04-01 → 2025-10-15 (-168d) | 24.75h → 12.38h | 0.5d → 0.07d |  |
| 47 | Execute TP | 2026-04-01 → 2025-10-15 (-168d) | 2026-04-08 → 2025-10-17 (-173d) | 4.6d → 2.3d | 0.5d → 0.07d |  |
| 48 | Fix found defects | 2026-04-08 → 2025-10-17 (-173d) | 2026-05-05 → 2025-10-31 (-186d) | 19.25d → 9.63d | 0.5d → 0.07d |  |
| 49 | Test fixed defects | 2026-05-05 → 2025-10-31 (-186d) | 2026-05-15 → 2025-11-06 (-190d) | 7.7d → 3.85d | 0.5d → 0.07d |  |
| 50 | **Load, stress and performance testing** | 2026-05-15 → 2025-11-06 (-190d) | 2026-10-15 → 2026-01-19 (-269d) | 110d → 53d |  |  |
| 51 | Write test plan | 2026-05-15 → 2025-11-06 (-190d) | 2026-07-24 → 2025-12-11 (-225d) | 50.25d → 25.13d | 0.5d → 0.07d |  |
| 52 | **Review TP** | 2026-07-24 → 2025-12-11 (-225d) | 2026-08-17 → 2025-12-18 (-242d) | 17d → 6d |  |  |
| 53 | Preparation for TP | 2026-07-24 → 2025-12-11 (-225d) | 2026-08-05 → 2025-12-15 (-233d) | 67h → 16.75h | 0.5d → 0.07d |  |
| 54 | Review TP meeting | 2026-08-05 → 2025-12-15 (-233d) | 2026-08-11 → 2025-12-16 (-238d) | 33.5h → 6.7h | 0.5d → 0.07d |  |
| 55 | Rework | 2026-08-11 → 2025-12-16 (-238d) | 2026-08-17 → 2025-12-18 (-242d) | 29.33h → 14.67h | 0.5d → 0.07d |  |
| 56 | Execute TP | 2026-08-17 → 2025-12-18 (-242d) | 2026-09-11 → 2025-12-31 (-254d) | 19.2d → 9.6d | 0.5d → 0.07d |  |
| 57 | Fix found defects | 2026-09-11 → 2025-12-31 (-254d) | 2026-10-02 → 2026-01-12 (-263d) | 14.8d → 7.4d | 0.5d → 0.07d |  |
| 58 | Test fixed defects | 2026-10-02 → 2026-01-12 (-263d) | 2026-10-15 → 2026-01-19 (-269d) | 9.25d → 4.63d | 0.5d → 0.07d |  |
| 59 | **Documentation** | 2026-10-15 → 2026-01-19 (-269d) | 2026-11-03 → 2026-01-23 (-284d) | 14d → 5d |  |  |
| 60 | User documentation | 2026-10-15 → 2026-01-19 (-269d) | 2026-10-21 → 2026-01-20 (-274d) | 28.2h → 14.1h | 0.5d → 0.07d |  |
| 61 | **Review UD** | 2026-10-21 → 2026-01-20 (-274d) | 2026-11-03 → 2026-01-23 (-284d) | 10d → 4d |  |  |
| 62 | Preparation for UD review | 2026-10-21 → 2026-01-20 (-274d) | 2026-10-27 → 2026-01-21 (-279d) | 35.25h → 8.06h | 0.5d → 0.07d |  |
| 63 | Review UD meeting | 2026-10-27 → 2026-01-21 (-279d) | 2026-10-29 → 2026-01-22 (-280d) | 14.1h → 2.82h | 0.5d → 0.07d |  |
| 64 | Rework | 2026-10-29 → 2026-01-22 (-280d) | 2026-11-03 → 2026-01-23 (-284d) | 20.3h → 10.15h | 0.5d → 0.07d |  |
| 65 | **Training material** | 2026-11-03 → 2026-01-23 (-284d) | 2026-12-01 → 2026-02-03 (-301d) | 21d → 8d |  |  |
| 66 | Tutorial | 2026-11-03 → 2026-01-23 (-284d) | 2026-11-13 → 2026-01-29 (-288d) | 66.5h → 33.25h | 0.5d → 0.07d |  |
| 67 | **Review tutorial** | 2026-11-13 → 2026-01-29 (-288d) | 2026-12-01 → 2026-02-03 (-301d) | 13d → 4d |  |  |
| 68 | Preparation for tutorial review | 2026-11-13 → 2026-01-29 (-288d) | 2026-11-24 → 2026-02-02 (-295d) | 53.2h → 13.3h | 0.5d → 0.07d |  |
| 69 | Review tutorial meeting | 2026-11-24 → 2026-02-02 (-295d) | 2026-11-27 → 2026-02-02 (-298d) | 26.6h → 5.32h | 0.5d → 0.07d |  |
| 70 | Rework | 2026-11-27 → 2026-02-02 (-298d) | 2026-12-01 → 2026-02-03 (-301d) | 16.8h → 8.4h | 0.5d → 0.07d |  |

## Version 3 (saved 2025-06-09)

Note of the change: Submit HW2

Last finish 2026-02-03 → 2026-02-10 (+7d).

Changed:

| ID | Task | Start | Finish | Duration | Total float | Other |
| --- | --- | --- | --- | --- | --- | --- |
| 7 | **Requirements** |  | 2025-06-19 → 2025-06-24 (+5d) | 5d → 8d |  |  |
| 8 | Write requirements |  | 2025-06-17 → 2025-06-18 (+1d) | 15.6h → 31.2h | 0.07d → 1.7d | resources Requirement Engineer 1; Requirement Engineer 2 → Requirement Engineer 1 |
| 9 | Write use case model |  |  | 7.6h → 15.2h | 1.07d → 3.7d | resources Requirement Engineer 7; Requirement Engineer 8 → Requirement Engineer 2 |
| 10 | **Review requirements** | 2025-06-17 → 2025-06-18 (+1d) | 2025-06-18 → 2025-06-20 (+2d) | 2d → 3d |  |  |
| 11 | Preparation for review | 2025-06-17 → 2025-06-18 (+1d) | 2025-06-18 → 2025-06-20 (+2d) |  | 0.07d → 1.7d |  |
| 12 | Review meeting | 2025-06-18 → 2025-06-20 (+2d) | 2025-06-18 → 2025-06-20 (+2d) |  | 0.07d → 1.7d |  |
| 13 | Rework | 2025-06-18 → 2025-06-20 (+2d) | 2025-06-19 → 2025-06-24 (+5d) | 6.46h → 9.69h | 0.07d → 1.7d | resources Requirement Engineer 1; Requirement Engineer 7; Requirement Engineer 2 → Requirement Engineer 1; Requirement Engineer 2 |
| 14 | **Analysis** | 2025-06-19 → 2025-06-24 (+5d) | 2025-06-23 → 2025-06-26 (+3d) |  |  |  |
| 15 | Write analysis document | 2025-06-19 → 2025-06-24 (+5d) | 2025-06-20 → 2025-06-24 (+4d) |  | 0.07d → 1.7d |  |
| 16 | **Review analysis document** | 2025-06-20 → 2025-06-24 (+4d) | 2025-06-20 → 2025-06-25 (+5d) | 1d → 2d |  |  |
| 17 | Preparation for analysis document | 2025-06-20 → 2025-06-24 (+4d) | 2025-06-20 → 2025-06-24 (+4d) |  | 0.07d → 1.7d |  |
| 18 | Review meeting | 2025-06-20 → 2025-06-24 (+4d) | 2025-06-20 → 2025-06-25 (+5d) |  | 0.07d → 1.7d |  |
| 19 | Rework | 2025-06-20 → 2025-06-25 (+5d) | 2025-06-23 → 2025-06-26 (+3d) |  | 0.07d → 1.7d |  |
| 20 | **Design** | 2025-06-23 → 2025-06-26 (+3d) | 2025-07-10 → 2025-07-14 (+4d) | 14d → 13d |  |  |
| 21 | Write DD | 2025-06-23 → 2025-06-26 (+3d) | 2025-06-27 → 2025-07-01 (+4d) |  | 153.14d → 155.79d |  |
| 22 | **Review DD** | 2025-06-27 → 2025-07-01 (+4d) | 2025-07-01 → 2025-07-04 (+3d) | 3d → 4d |  |  |
| 23 | Preparation for DD | 2025-06-27 → 2025-07-01 (+4d) | 2025-06-30 → 2025-07-03 (+3d) |  | 153.14d → 155.79d |  |
| 24 | Review meeting | 2025-06-30 → 2025-07-03 (+3d) | 2025-07-01 → 2025-07-04 (+3d) |  | 153.14d → 155.79d |  |
| 25 | Rework | 2025-07-01 → 2025-07-04 (+3d) | 2025-07-03 → 2025-07-08 (+5d) |  | 153.14d → 155.79d |  |
| 26 | Write DM | 2025-06-23 → 2025-06-26 (+3d) | 2025-07-04 → 2025-07-08 (+4d) |  | 0.07d → 1.7d |  |
| 27 | **Review DM** | 2025-07-04 → 2025-07-08 (+4d) | 2025-07-07 → 2025-07-10 (+3d) | 2d → 3d |  |  |
| 28 | Preparation for DM | 2025-07-04 → 2025-07-08 (+4d) | 2025-07-07 → 2025-07-09 (+2d) |  | 0.07d → 1.7d | resources System Engineer 204; System Engineer 205; System Engineer 501 → System Engineer 1; System Engineer 2; System Engineer 7 |
| 29 | Review meeting | 2025-07-07 → 2025-07-09 (+2d) | 2025-07-07 → 2025-07-10 (+3d) |  | 0.07d → 1.7d | resources System Engineer 204; System Engineer 205; System Engineer 9; System Engineer 501 → System Engineer 9; System Engineer 1; System Engineer 2; System Engineer 7 |
| 30 | Rework | 2025-07-07 → 2025-07-10 (+3d) | 2025-07-10 → 2025-07-14 (+4d) |  | 0.07d → 1.7d |  |
| 31 | **Coding and unit test** | 2025-07-10 → 2025-07-14 (+4d) | 2025-09-19 → 2025-09-24 (+5d) | 52d → 53d |  |  |
| 32 | Write code | 2025-07-10 → 2025-07-14 (+4d) | 2025-07-24 → 2025-07-29 (+5d) |  | 0.07d → 1.7d |  |
| 33 | **Unit testing** | 2025-07-24 → 2025-07-29 (+5d) | 2025-09-19 → 2025-09-24 (+5d) |  |  |  |
| 34 | Prepare/execute test cases | 2025-07-24 → 2025-07-29 (+5d) | 2025-08-19 → 2025-08-21 (+2d) |  | 0.07d → 1.7d |  |
| 35 | Fix found defects | 2025-08-19 → 2025-08-21 (+2d) | 2025-09-05 → 2025-09-09 (+4d) |  | 0.07d → 1.7d |  |
| 36 | Test fixed defects | 2025-09-05 → 2025-09-09 (+4d) | 2025-09-19 → 2025-09-24 (+5d) |  | 0.07d → 1.7d |  |
| 37 | **Code inspection** | 2025-07-24 → 2025-07-29 (+5d) | 2025-08-01 → 2025-08-05 (+4d) | 7d → 6d |  |  |
| 38 | Preparation for code inspection | 2025-07-24 → 2025-07-29 (+5d) | 2025-07-25 → 2025-07-30 (+5d) |  | 35.49d → 37.11d | resources Programmer 203; Programmer 205; Programmer 8; Programmer 9 → Programmer 203; Programmer 205; Programmer 10; Programmer 202 |
| 39 | Code inspection meeting | 2025-07-25 → 2025-07-30 (+5d) | 2025-07-28 → 2025-07-30 (+2d) |  | 35.49d → 37.11d |  |
| 40 | Rework | 2025-07-28 → 2025-07-30 (+2d) | 2025-08-01 → 2025-08-05 (+4d) |  | 35.49d → 37.11d |  |
| 41 | **System integration testing** | 2025-08-01 → 2025-09-24 (+54d) | 2025-11-06 → 2025-11-11 (+5d) | 70d → 35d |  |  |
| 42 | Write test plan | 2025-09-19 → 2025-09-24 (+5d) | 2025-10-10 → 2025-10-14 (+4d) |  | 0.07d → 1.7d |  |
| 43 | **Review TP** | 2025-10-10 → 2025-10-14 (+4d) | 2025-10-15 → 2025-10-21 (+6d) | 4d → 6d |  |  |
| 44 | Preparation for TP | 2025-10-10 → 2025-10-14 (+4d) | 2025-10-13 → 2025-10-17 (+4d) | 7.45h → 18.62h | 0.07d → 1.7d | resources Test Engineer 3; Test Engineer 4; Test Engineer 302; Test Engineer 404 → Test Engineer 3; Test Engineer 4; Test Engineer 302; Test Engineer 2 |
| 45 | Review TP meeting | 2025-10-13 → 2025-10-17 (+4d) | 2025-10-14 → 2025-10-17 (+3d) | 4.97h → 1.99h | 0.07d → 1.7d | resources Test Engineer 1; Test Engineer 2403; Test Engineer 404; Test Engineer 405; Test Engineer 2 → Test Engineer 2; Test Engineer 1; Test Engineer 3; Test Engineer 4; Test Engineer 302 |
| 46 | Rework | 2025-10-14 → 2025-10-17 (+3d) | 2025-10-15 → 2025-10-21 (+6d) |  | 0.07d → 1.7d |  |
| 47 | Execute TP | 2025-10-15 → 2025-10-21 (+6d) | 2025-10-17 → 2025-10-23 (+6d) |  | 0.07d → 1.7d | resources Test Engineer 302; Test Engineer 2403 → Test Engineer 1; Test Engineer 2 |
| 48 | Fix found defects | 2025-10-17 → 2025-10-23 (+6d) | 2025-10-31 → 2025-11-06 (+6d) |  | 0.07d → 1.7d |  |
| 49 | Test fixed defects | 2025-10-31 → 2025-11-06 (+6d) | 2025-11-06 → 2025-11-11 (+5d) |  | 0.07d → 1.7d |  |
| 50 | **Load, stress and performance testing** | 2025-11-06 → 2025-11-11 (+5d) | 2026-01-19 → 2026-01-22 (+3d) |  |  |  |
| 51 | Write test plan | 2025-11-06 → 2025-11-11 (+5d) | 2025-12-11 → 2025-12-16 (+5d) |  | 0.07d → 1.7d | resources Test Engineer 3; Test Engineer 4 → Test Engineer 2; Test Engineer 1 |
| 52 | **Review TP** | 2025-12-11 → 2025-12-16 (+5d) | 2025-12-18 → 2025-12-23 (+5d) |  |  |  |
| 53 | Preparation for TP | 2025-12-11 → 2025-12-16 (+5d) | 2025-12-15 → 2025-12-19 (+4d) |  | 0.07d → 1.7d |  |
| 54 | Review TP meeting | 2025-12-15 → 2025-12-19 (+4d) | 2025-12-16 → 2025-12-19 (+3d) |  | 0.07d → 1.7d |  |
| 55 | Rework | 2025-12-16 → 2025-12-19 (+3d) | 2025-12-18 → 2025-12-23 (+5d) |  | 0.07d → 1.7d | resources Test Engineer 3; Test Engineer 4 → Test Engineer 2; Test Engineer 1 |
| 56 | Execute TP | 2025-12-18 → 2025-12-23 (+5d) | 2025-12-31 → 2026-01-06 (+6d) |  | 0.07d → 1.7d |  |
| 57 | Fix found defects | 2025-12-31 → 2026-01-06 (+6d) | 2026-01-12 → 2026-01-15 (+3d) |  | 0.07d → 1.7d |  |
| 58 | Test fixed defects | 2026-01-12 → 2026-01-15 (+3d) | 2026-01-19 → 2026-01-22 (+3d) |  | 0.07d → 1.7d |  |
| 59 | **Documentation** | 2026-01-19 → 2026-01-22 (+3d) | 2026-01-23 → 2026-01-29 (+6d) | 5d → 6d |  |  |
| 60 | User documentation | 2026-01-19 → 2026-01-22 (+3d) | 2026-01-20 → 2026-01-26 (+6d) |  | 0.07d → 1.7d |  |
| 61 | **Review UD** | 2026-01-20 → 2026-01-26 (+6d) | 2026-01-23 → 2026-01-29 (+6d) |  |  |  |
| 62 | Preparation for UD review | 2026-01-20 → 2026-01-26 (+6d) | 2026-01-21 → 2026-01-27 (+6d) |  | 0.07d → 1.7d |  |
| 63 | Review UD meeting | 2026-01-21 → 2026-01-27 (+6d) | 2026-01-22 → 2026-01-27 (+5d) |  | 0.07d → 1.7d |  |
| 64 | Rework | 2026-01-22 → 2026-01-27 (+5d) | 2026-01-23 → 2026-01-28 (+5d) |  | 0.07d → 1.7d |  |
| 65 | **Training material** | 2026-01-23 → 2026-01-28 (+5d) | 2026-02-03 → 2026-02-10 (+7d) | 8d → 10d |  |  |
| 66 | Tutorial | 2026-01-23 → 2026-01-28 (+5d) | 2026-01-29 → 2026-02-03 (+5d) |  | 0.07d → 1.7d |  |
| 67 | **Review tutorial** | 2026-01-29 → 2026-02-03 (+5d) | 2026-02-03 → 2026-02-09 (+6d) | 4d → 5d |  |  |
| 68 | Preparation for tutorial review | 2026-01-29 → 2026-02-03 (+5d) | 2026-02-02 → 2026-02-05 (+3d) |  | 0.07d → 1.7d |  |
| 69 | Review tutorial meeting | 2026-02-02 → 2026-02-05 (+3d) | 2026-02-02 → 2026-02-06 (+4d) |  | 0.07d → 1.7d |  |
| 70 | Rework | 2026-02-02 → 2026-02-06 (+4d) | 2026-02-03 → 2026-02-09 (+6d) |  | 0.07d → 1.7d |  |
